# Office Building

Schedule from Primavera P6, 2026-01-05 to 2026-10-09, data date 2026-03-30, costs in USD, A marks actual dates.
Must finish by 2026-09-25

## Resources

| Resource | Group |
| --- | --- |
| Excavator 30t | equipment |
| General labourer | labor |
| Concrete | material |
| Tower crane | equipment |

## Schedule

| ID | WBS | Activity | Type | Duration | Start | Finish | Predecessors | Complete | Remaining | Planned start | Planned finish | Total float | Free float | Constraint | Resources | Cost | Actual cost |
| --- | --- | --- | --- | --- | --- | --- | --- | --- | --- | --- | --- | --- | --- | --- | --- | --- | --- |
|  | PRE | **Preconstruction** |  |  | 2026-01-05 | 2026-02-06 |  |  |  |  |  |  |  |  |  |  |  |
| A1010 |  | Permits and approvals |  | 20d | 2026-01-05 A | 2026-01-30 A | M1000 | 100% |  |  |  |  |  |  |  |  |  |
| M1000 |  | Notice to Proceed | milestone | 0d | 2026-01-05 A | 2026-01-05 A |  | 100% |  |  |  |  |  |  |  |  |  |
| A1020 |  | Mobilisation |  | 5d | 2026-02-02 A | 2026-02-06 A | A1010 | 100% |  |  |  |  |  |  |  |  |  |
|  | SUB | **Substructure** |  |  | 2026-02-09 | 2026-04-10 |  |  |  |  |  |  |  |  |  |  |  |
| A2010 |  | Bulk excavation |  | 15d | 2026-02-09 A | 2026-03-06 A | A1020 | 100% |  | 2026-02-09 | 2026-02-27 |  |  |  | Excavator 30t [120 h]; General labourer [240 h] | 28,800 | 28,800 |
| A2020 |  | Foundations |  | 20d | 2026-03-09 A | 2026-04-10 | A2010 | 50% | 10d | 2026-03-02 | 2026-03-27 | -10d | 0d |  | General labourer [480 h]; Concrete [900] | 165,600 | 82,800 |
| A2030 |  | Underground services |  | 10d | 2026-03-11 A | 2026-03-24 A | A2010 SS+5d | 100% |  | 2026-03-02 | 2026-03-13 |  |  |  |  |  |  |
|  | SUP | **Superstructure** |  |  | 2026-04-13 | 2026-07-31 |  |  |  |  |  |  |  |  |  |  |  |
| A3010 |  | Structural frame |  | 50d | 2026-04-13 | 2026-06-19 | A2020 |  |  | 2026-03-30 | 2026-06-05 | -10d | 0d |  | Tower crane [400 h]; General labourer [1600 h] | 160,000 |  |
| A3020 |  | Roof |  | 15d | 2026-06-15 | 2026-07-03 | A3010 FS-5d |  |  | 2026-06-01 | 2026-06-19 | 15d |  |  |  |  |  |
| A3030 |  | Facade and glazing |  | 30d | 2026-06-22 | 2026-07-31 | A3010 |  |  | 2026-06-08 | 2026-07-17 | -10d | 0d | finish on or before 2026-07-17 |  |  |  |
|  | FIN | **Fit-out and Handover** |  |  | 2026-06-22 | 2026-10-09 |  |  |  |  |  |  |  |  |  |  |  |
| A4015 |  | Lift installation |  | 20d | 2026-06-22 | 2026-07-17 | A3010 |  |  | 2026-06-15 | 2026-07-10 | 45d |  |  |  |  |  |
| A4010 |  | Interior fit-out |  | 40d | 2026-08-03 | 2026-09-25 | A3020, A3030 |  |  | 2026-07-20 | 2026-09-11 | -10d | 0d |  |  |  |  |
| A4020 |  | Testing and commissioning |  | 10d | 2026-09-28 | 2026-10-09 | A4010, A4015 |  |  | 2026-09-14 | 2026-09-25 | -10d | 0d |  |  |  |  |
| M9000 |  | Practical completion | milestone | 0d | 2026-10-09 | 2026-10-09 | A4020 |  |  | 2026-09-25 | 2026-09-25 | -10d | 0d |  |  |  |  |
|  | MGT | **Management** |  |  | 2026-01-05 | 2026-09-25 |  |  |  |  |  |  |  |  |  |  |  |
| A0100 |  | Project management | level of effort | 195d | 2026-01-05 A | 2026-09-25 |  | 20% | 130d |  |  | 0d |  |  |  |  |  |
